How a schedule from Planner changed from version to version. A marks actual dates.

## Version 1 (saved 2019-03-13)

Note of the change: Add software development plan.

| ID | WBS | Task | Start | Finish | Predecessors | Complete | Constraint |
| --- | --- | --- | --- | --- | --- | --- | --- |
| 1 | 1 | **Specification of verification software** | 2019-02-05 | 2019-06-12 |  |  |  |
| 2 |  | provide final specification | 2019-03-15 | 2019-03-15 |  |  | start no earlier than 2019-03-15 |
| 3 |  | specify gearbox calibration function | 2019-06-12 | 2019-06-12 | 50 |  |  |
| 4 |  | define parameters for pupil alignment test | 2019-02-05 | 2019-02-05 |  |  |  |
| 5 | 2 | **Software:Sequencing Code (vfrig program)** | 2019-02-05 | 2019-08-12 |  |  |  |
| 6 | 2.1 | **Software:Hardware control** | 2019-03-12 | 2019-03-25 |  |  |  |
| 7 |  | provide hardware control functions for lamps | 2019-03-12 | 2019-03-25 |  |  | must start on 2019-03-12 |
| 8 | 2.2 | **write sequencing software according to specification** | 2019-02-05 | 2019-03-12 |  | 85% | must start on 2019-02-05 |
| 9 |  | write datum and collision detection test | 2019-02-05 | 2019-02-07 |  |  |  |
| 10 |  | write task dependency resolution | 2019-02-08 | 2019-02-12 | 9 |  |  |
| 11 |  | write database access code | 2019-02-13 | 2019-02-15 | 10 |  |  |
| 12 |  | write datum repetability test | 2019-02-18 | 2019-02-20 | 11 |  |  |
| 13 |  | write positional repetability test | 2019-02-21 | 2019-02-26 | 12 |  |  |
| 14 |  | write positional verification test | 2019-02-27 | 2019-03-04 | 13 |  |  |
| 15 |  | write pupil alignment test | 2019-03-05 | 2019-03-07 | 14 |  |  |
| 16 |  | integrate image analysis code | 2019-03-08 | 2019-03-11 | 15 |  |  |
| 17 |  | tidy up code | 2019-03-12 | 2019-03-12 | 16 |  |  |
| 18 |  | Software:Sequencing Code:Add parameter evaluation | 2019-03-13 | 2019-03-15 | 8 |  |  |
| 19 |  | Software: Change measurement of datum repeatability according to changed specification | 2019-03-18 | 2019-03-19 | 18 |  |  |
| 20 |  | Software:Test task resolution and database storage | 2019-03-20 | 2019-03-21 | 19 |  |  |
| 21 |  | Software: Test & debug sequencing code with HW simulation | 2019-03-22 | 2019-03-28 | 20 |  |  |
| 22 | 2.7 | **Software:Sequencing Code: Test w/ real hardware** | 2019-03-29 | 2019-04-04 | 21, 18, 8 |  |  |
| 23 |  | Software:Sequencing Code:Test Collison Detection | 2019-03-29 | 2019-04-01 | 42 |  |  |
| 24 |  | Software: Test rig self-test code | 2019-04-02 | 2019-04-04 | 23 |  |  |
| 25 | 2.8 | **Software:Image Analysis** | 2019-04-11 | 2019-08-08 |  |  |  |
| 26 | 2.8.1 | **Software: test image analysis with a batch of images** | 2019-04-11 | 2019-08-08 |  |  |  |
| 27 |  | test metrology calibration image analysis | 2019-04-11 | 2019-04-12 | 49 |  |  |
| 28 |  | test positional repeatability image analysis | 2019-04-15 | 2019-04-16 | 27, 47 |  |  |
| 29 |  | test metrology height image analysis | 2019-04-17 | 2019-04-18 | 28, 48 |  |  |
| 30 |  | test pupil alignment image analysis | 2019-08-07 | 2019-08-08 | 51 | 10% |  |
| 31 |  | Software:Adapt to final specification | 2019-04-19 | 2019-05-02 | 29 |  |  |
| 32 |  | Software:Test pupil alignment | 2019-08-09 | 2019-08-12 | 30, 39, 51, 4 |  |  |
| 33 | 2.11 | **Software: implement pos-rep camera calibration** | 2019-05-03 | 2019-06-06 | 31 |  |  |
| 34 |  | research and solve pos-rep camera calibration function | 2019-05-03 | 2019-05-30 |  |  |  |
| 35 |  | test pos-rep camera calibration function | 2019-05-31 | 2019-06-06 | 34 |  |  |
| 36 |  | Software:Code gearbox calibration function | 2019-06-13 | 2019-06-19 | 29, 3 |  |  |
| 37 |  | Software: Test gearbox calibration function w/ real data | 2019-06-20 | 2019-06-26 | 36 |  |  |
| 38 |  | Software:Test and complete positional verification | 2019-06-27 | 2019-07-02 | 37 |  |  |
| 39 | 2.15 | **Software: implement pupil alignment camera calibration** | 2019-02-05 | 2019-03-11 |  |  |  |
| 40 |  | research and possibly solve pup-algn camera calibration function | 2019-02-05 | 2019-03-11 |  |  |  |
| 41 | 3 | **Provide test hardware** | 2019-03-21 | 2019-08-05 |  |  |  |
| 42 |  | provide wire set-up to test collision detection with real FPUs | 2019-03-21 | 2019-03-22 |  |  | start no earlier than 2019-03-21 |
| 43 |  | provide an initial batch of FPUs to test image analysis functions | 2019-03-25 | 2019-03-25 | 42 |  |  |
| 44 |  | provide FPUs with fibres and lenses for pupil alignment tests | 2019-08-05 | 2019-08-05 |  |  | start no earlier than 2019-08-05 |
| 45 | 4 | **generate test data for software engineering and testing** | 2019-04-05 | 2019-08-06 | 22, 6 |  |  |
| 46 |  | capture images for datum repeatability tests | 2019-04-05 | 2019-04-05 |  |  |  |
| 47 |  | capture images for positional repeatability tests | 2019-04-08 | 2019-04-08 | 46 |  |  |
| 48 |  | capture images for metrology height tests | 2019-04-09 | 2019-04-09 | 47 |  |  |
| 49 |  | capture images for metrology calibration test | 2019-04-10 | 2019-04-10 | 48 | 27% |  |
| 50 |  | get test data for gearbox calibration | 2019-06-07 | 2019-06-11 | 33, 28 |  |  |
| 51 |  | capture images for pupil alignment tests | 2019-08-06 | 2019-08-06 | 44 |  |  |

## Version 2 (saved 2019-03-18)

Note of the change: update software plan

Last finish stays 2019-08-12.

Added:

| ID | Task | Start | Finish | Predecessors | Constraint | Resources |
| --- | --- | --- | --- | --- | --- | --- |
| 26 | **write image analysis functions** | 2019-03-22 | 2019-03-29 |  |  |  |
| 27 | write (draft) analysis function for metrology calibration / fibre detection | 2019-03-22 | 2019-03-26 |  | start no earlier than 2019-03-22 | Stephen |
| 28 | write image analysis function for pupil alignment | 2019-03-27 | 2019-03-29 | 27 |  | Stephen |

Changed:

| ID | Task | Start | Finish | Complete | Predecessors | Other |
| --- | --- | --- | --- | --- | --- | --- |
| 1 | **Specification of verification software** |  | 2019-06-12 → 2019-04-24 (-49d) |  |  |  |
| 3 | specify gearbox calibration function | 2019-06-12 → 2019-04-24 (-49d) | 2019-06-12 → 2019-04-24 (-49d) |  |  |  |
| 22 | **Software:Sequencing Code: Test w/ real hardware** |  |  |  |  | resources Johannes → none |
| 25 | **Software:Image Analysis** | 2019-04-11 → 2019-03-22 (-20d) |  |  |  |  |
| 29 | **Software: test image analysis with a batch of images** | 2019-04-11 → 2019-04-17 (+6d) |  |  |  | resources Johannes → none |
| 30 | test positional repeatability image analysis | 2019-04-15 → 2019-04-17 (+2d) | 2019-04-16 → 2019-04-22 (+6d) |  | 32, 50 → 52 | resources none → Alan [50%] |
| 31 | test metrology height image analysis | 2019-04-17 → 2019-04-23 (+6d) | 2019-04-18 → 2019-04-26 (+8d) |  | 30, 51 → 30 | resources none → Alan [50%] |
| 32 | test metrology calibration image analysis | 2019-04-11 → 2019-04-29 (+18d) | 2019-04-12 → 2019-05-02 (+20d) |  | 52 → 31, 27 | resources none → Alan [50%] |
| 33 | test pupil alignment image analysis |  |  |  | 54 → 28, 32, 54 |  |
| 34 | Software:Adapt to final specification | 2019-04-19 → 2019-04-05 (-14d) | 2019-05-02 → 2019-04-18 (-14d) |  | 31 → 24 | resources none → Johannes |
| 36 | **Software: implement pos-rep camera calibration** | 2019-05-03 → 2019-03-14 (-50d) | 2019-06-06 → 2019-04-17 (-50d) |  | 34 → none |  |
| 37 | research and solve pos-rep camera calibration function | 2019-05-03 → 2019-03-14 (-50d) | 2019-05-30 → 2019-04-10 (-50d) |  |  | constraint none → start no earlier than 2019-03-14; resources Johannes → Alex |
| 38 | test pos-rep camera calibration function | 2019-05-31 → 2019-04-11 (-50d) | 2019-06-06 → 2019-04-17 (-50d) |  |  | resources Johannes → Alex |
| 39 | Software:Code gearbox calibration function | 2019-06-13 → 2019-04-25 (-49d) | 2019-06-19 → 2019-05-01 (-49d) |  | 31, 3 → 3 |  |
| 40 | Software: Test gearbox calibration function w/ real data | 2019-06-20 → 2019-05-02 (-49d) | 2019-06-26 → 2019-05-08 (-49d) |  |  |  |
| 41 | Software:Test and complete positional verification | 2019-06-27 → 2019-05-09 (-49d) | 2019-07-02 → 2019-05-14 (-49d) |  |  |  |
| 42 | **Software: implement pupil alignment camera calibration** | 2019-02-05 → 2019-04-18 (+72d) | 2019-03-11 → 2019-05-22 (+72d) |  |  |  |
| 43 | research and possibly solve pup-algn camera calibration function | 2019-02-05 → 2019-04-18 (+72d) | 2019-03-11 → 2019-05-22 (+72d) |  | none → 38, 37 |  |
| 49 | capture images for datum repeatability tests |  | 2019-04-05 → 2019-04-08 (+3d) |  |  | resources none → Alan [50%] |
| 50 | capture images for positional repeatability tests | 2019-04-08 → 2019-04-09 (+1d) | 2019-04-08 → 2019-04-10 (+2d) | 0% → 35% |  | resources none → Alan [50%] |
| 51 | capture images for metrology height tests | 2019-04-09 → 2019-04-11 (+2d) | 2019-04-09 → 2019-04-12 (+3d) |  |  | resources none → Alan [50%] |
| 52 | capture images for metrology calibration test | 2019-04-10 → 2019-04-15 (+5d) | 2019-04-10 → 2019-04-16 (+6d) |  |  | resources none → Alan [50%] |
| 53 | get test data for gearbox calibration | 2019-06-07 → 2019-04-19 (-49d) | 2019-06-11 → 2019-04-23 (-49d) |  | 36, 30 → 34, 24 |  |
